# NORTHSTAR GRID CONNECTION

Schedule from Primavera P6, 2026-01-05 to 2028-03-14, data date 2026-02-28, A marks actual dates.

## Schedule

| ID | WBS | Activity | Type | Duration | Start | Finish | Predecessors | Complete | Remaining | Total float |
| --- | --- | --- | --- | --- | --- | --- | --- | --- | --- | --- |
|  | NS | **Northstar Grid Connection** |  |  | 2026-01-05 | 2028-03-14 |  |  |  |  |
| NS-000 |  | Notice to proceed |  | 0d | 2026-01-05 A | 2026-01-05 A |  | 100% |  |  |
|  | BUILD | **Construction** |  |  | 2026-09-15 | 2027-10-05 |  |  |  |  |
| NS-300 |  | Substation civils and foundations |  | 130d | 2026-09-15 | 2027-03-15 | NS-200 FS+5d |  |  | -5d |
| NS-400 |  | Primary plant installation |  | 120d | 2027-04-20 | 2027-10-05 | NS-210, NS-300 |  |  | -6d |
|  | COMM | **Testing and Commissioning** |  |  | 2027-10-06 | 2028-03-14 |  |  |  |  |
| NS-500 |  | Protection testing |  | 65d | 2027-10-06 | 2028-01-04 | NS-400 |  |  | -7d |
| NS-600 |  | System commissioning |  | 50d | 2028-01-05 | 2028-03-14 | NS-500 |  |  | -9d |
| NS-900 |  | Ready for service | milestone | 0d | 2028-02-26 | 2028-02-26 | NS-600 |  |  | -9d |
|  | DES | **Design and Consents** |  |  | 2026-01-06 | 2026-07-27 |  |  |  |  |
| NS-100 |  | Detailed design mobilisation |  | 20d | 2026-01-06 A | 2026-02-09 A | NS-000 | 100% |  |  |
| NS-110 |  | Primary substation detailed design |  | 60d | 2026-02-10 A | 2026-05-04 | NS-100 | 25% | 45d | 5d |
| NS-120 |  | Planning consent determination |  | 60d | 2026-05-05 | 2026-07-27 | NS-110 |  |  | 2d |
|  | ENAB | **Enabling Works** |  |  | 2026-02-04 | 2026-07-19 |  |  |  |  |
| NS-701 |  | Temporary access design |  | 10d | 2026-02-04 | 2026-02-15 | NS-000 |  |  | 40d |
| NS-702 |  | Temporary access permits |  | 10d | 2026-02-18 | 2026-03-01 | NS-701 |  |  | 39d |
| NS-703 |  | Site compound layout |  | 10d | 2026-03-04 | 2026-03-15 | NS-702 |  |  | 38d |
| NS-704 |  | Welfare procurement |  | 10d | 2026-03-18 | 2026-03-29 | NS-703 |  |  | 37d |
| NS-705 |  | Fencing design |  | 10d | 2026-04-01 | 2026-04-12 | NS-704 |  |  | 36d |
| NS-706 |  | Security review |  | 10d | 2026-04-15 | 2026-04-26 | NS-705 |  |  | 35d |
| NS-707 |  | Survey control setup |  | 10d | 2026-04-29 | 2026-05-10 | NS-706 |  |  | 34d |
| NS-708 |  | Temporary power design |  | 10d | 2026-05-13 | 2026-05-24 | NS-707 |  |  | 33d |
| NS-709 |  | Temporary water design |  | 10d | 2026-05-27 | 2026-06-07 | NS-708 |  |  | 32d |
| NS-710 |  | Compound installation |  | 10d | 2026-06-10 | 2026-06-21 | NS-709 |  |  | 31d |
| NS-711 |  | Access route installation |  | 10d | 2026-06-24 | 2026-07-05 | NS-710 |  |  | 30d |
| NS-712 |  | Enabling works inspection |  | 10d | 2026-07-08 | 2026-07-19 | NS-711 |  |  | 29d |

| ID | WBS | Activity | Duration | Start | Finish | Predecessors | Total float |
| --- | --- | --- | --- | --- | --- | --- | --- |
|  | PROC | **Long Lead Procurement** |  | 2026-07-28 | 2027-04-19 |  |  |
| NS-200 |  | Long lead procurement release | 30d | 2026-07-28 | 2026-09-07 | NS-120 | 1d |
| NS-210 |  | Switchgear manufacture and FAT | 160d | 2026-09-08 | 2027-04-19 | NS-200 | -4d |
