# RIVERSIDE SUBSTATION UPGRADE

Schedule from Primavera P6, 2026-01-05 to 2028-03-14, data date 2026-02-28, A marks actual dates.

## Schedule

| ID | WBS | Activity | Type | Duration | Start | Finish | Predecessors | Complete | Remaining | Total float |
| --- | --- | --- | --- | --- | --- | --- | --- | --- | --- | --- |
|  | NS | **Riverside Substation Upgrade** |  |  | 2026-01-05 | 2028-03-14 |  |  |  |  |
| RS-000 |  | Notice to proceed |  | 0d | 2026-01-05 A | 2026-01-05 A |  | 100% |  |  |
|  | BUILD | **Construction** |  |  | 2026-09-15 | 2027-10-05 |  |  |  |  |
| RS-300 |  | Substation civils and foundations |  | 130d | 2026-09-15 | 2027-03-15 | RS-200 FS+5d |  |  | -5d |
| RS-400 |  | Primary plant installation |  | 120d | 2027-04-20 | 2027-10-05 | RS-210, RS-300 |  |  | -6d |
|  | COMM | **Testing and Commissioning** |  |  | 2027-10-06 | 2028-03-14 |  |  |  |  |
| RS-500 |  | Protection testing |  | 65d | 2027-10-06 | 2028-01-04 | RS-400 |  |  | -7d |
| RS-600 |  | System commissioning |  | 50d | 2028-01-05 | 2028-03-14 | RS-500 |  |  | -9d |
| RS-900 |  | Ready for service | milestone | 0d | 2028-02-26 | 2028-02-26 | RS-600 |  |  | -9d |
|  | DES | **Design and Consents** |  |  | 2026-01-06 | 2026-07-27 |  |  |  |  |
| RS-100 |  | Detailed design mobilisation |  | 20d | 2026-01-06 A | 2026-02-09 A | RS-000 | 100% |  |  |
| RS-110 |  | Primary substation detailed design |  | 60d | 2026-02-10 A | 2026-05-04 | RS-100 | 25% | 45d | 5d |
| RS-120 |  | Planning consent determination |  | 60d | 2026-05-05 | 2026-07-27 | RS-110 |  |  | 2d |
|  | ENAB | **Enabling Works** |  |  | 2026-02-04 | 2026-07-19 |  |  |  |  |
| RS-701 |  | Temporary access design |  | 10d | 2026-02-04 | 2026-02-15 | RS-000 |  |  | 40d |
| RS-702 |  | Temporary access permits |  | 10d | 2026-02-18 | 2026-03-01 | RS-701 |  |  | 39d |
| RS-703 |  | Site compound layout |  | 10d | 2026-03-04 | 2026-03-15 | RS-702 |  |  | 38d |
| RS-704 |  | Welfare procurement |  | 10d | 2026-03-18 | 2026-03-29 | RS-703 |  |  | 37d |
| RS-705 |  | Fencing design |  | 10d | 2026-04-01 | 2026-04-12 | RS-704 |  |  | 36d |
| RS-706 |  | Security review |  | 10d | 2026-04-15 | 2026-04-26 | RS-705 |  |  | 35d |
| RS-707 |  | Survey control setup |  | 10d | 2026-04-29 | 2026-05-10 | RS-706 |  |  | 34d |
| RS-708 |  | Temporary power design |  | 10d | 2026-05-13 | 2026-05-24 | RS-707 |  |  | 33d |
| RS-709 |  | Temporary water design |  | 10d | 2026-05-27 | 2026-06-07 | RS-708 |  |  | 32d |
| RS-710 |  | Compound installation |  | 10d | 2026-06-10 | 2026-06-21 | RS-709 |  |  | 31d |
| RS-711 |  | Access route installation |  | 10d | 2026-06-24 | 2026-07-05 | RS-710 |  |  | 30d |
| RS-712 |  | Enabling works inspection |  | 10d | 2026-07-08 | 2026-07-19 | RS-711 |  |  | 29d |

| ID | WBS | Activity | Duration | Start | Finish | Predecessors | Total float |
| --- | --- | --- | --- | --- | --- | --- | --- |
|  | PROC | **Long Lead Procurement** |  | 2026-07-28 | 2027-04-19 |  |  |
| RS-200 |  | Long lead procurement release | 30d | 2026-07-28 | 2026-09-07 | RS-120 | 1d |
| RS-210 |  | Switchgear manufacture and FAT | 160d | 2026-09-08 | 2027-04-19 | RS-200 | -4d |
