# RIVERSIDE SUBSTATION UPGRADE

Schedule from Primavera P6, 2026-01-05 to 2027-11-22, data date 2026-01-31, A marks actual dates.

## Schedule

| ID | WBS | Activity | Type | Duration | Start | Finish | Predecessors | Complete | Remaining | Total float |
| --- | --- | --- | --- | --- | --- | --- | --- | --- | --- | --- |
|  | NS | **Riverside Substation Upgrade** |  |  | 2026-01-05 | 2027-11-22 |  |  |  |  |
| RS-000 |  | Notice to proceed |  | 0d | 2026-01-05 A | 2026-01-05 A |  | 100% |  |  |
|  | BUILD | **Construction** |  |  | 2026-06-23 | 2027-06-21 |  |  |  |  |
| RS-300 |  | Substation civils and foundations |  | 120d | 2026-06-23 | 2026-12-07 | RS-120 |  |  | 10d |
| RS-400 |  | Primary plant installation |  | 120d | 2027-01-05 | 2027-06-21 | RS-210, RS-300 |  |  | 7d |
|  | COMM | **Testing and Commissioning** |  |  | 2027-06-22 | 2027-11-22 |  |  |  |  |
| RS-500 |  | Protection testing |  | 60d | 2027-06-22 | 2027-09-13 | RS-400 |  |  | 5d |
| RS-600 |  | System commissioning |  | 50d | 2027-09-14 | 2027-11-22 | RS-500 |  |  | 3d |
| RS-900 |  | Ready for service | milestone | 0d | 2027-11-01 | 2027-11-01 | RS-600 |  |  | 3d |
|  | DES | **Design and Consents** |  |  | 2026-01-06 | 2026-06-22 |  |  |  |  |
| RS-100 |  | Detailed design mobilisation |  | 20d | 2026-01-06 A | 2026-02-02 | RS-000 | 25% | 15d | 20d |
| RS-110 |  | Primary substation detailed design |  | 40d | 2026-02-03 | 2026-03-30 | RS-100 |  |  | 15d |
| RS-120 |  | Planning consent determination |  | 60d | 2026-03-31 | 2026-06-22 | RS-110 |  |  | 13d |
|  | ENAB | **Enabling Works** |  |  | 2026-02-02 | 2026-07-17 |  |  |  |  |
| RS-701 |  | Temporary access design |  | 10d | 2026-02-02 | 2026-02-13 | RS-000 |  |  | 40d |
| RS-702 |  | Temporary access permits |  | 10d | 2026-02-16 | 2026-02-27 | RS-701 |  |  | 39d |
| RS-703 |  | Site compound layout |  | 10d | 2026-03-02 | 2026-03-13 | RS-702 |  |  | 38d |
| RS-704 |  | Welfare procurement |  | 10d | 2026-03-16 | 2026-03-27 | RS-703 |  |  | 37d |
| RS-705 |  | Fencing design |  | 10d | 2026-03-30 | 2026-04-10 | RS-704 |  |  | 36d |
| RS-706 |  | Security review |  | 10d | 2026-04-13 | 2026-04-24 | RS-705 |  |  | 35d |
| RS-707 |  | Survey control setup |  | 10d | 2026-04-27 | 2026-05-08 | RS-706 |  |  | 34d |
| RS-708 |  | Temporary power design |  | 10d | 2026-05-11 | 2026-05-22 | RS-707 |  |  | 33d |
| RS-709 |  | Temporary water design |  | 10d | 2026-05-25 | 2026-06-05 | RS-708 |  |  | 32d |
| RS-710 |  | Compound installation |  | 10d | 2026-06-08 | 2026-06-19 | RS-709 |  |  | 31d |
| RS-711 |  | Access route installation |  | 10d | 2026-06-22 | 2026-07-03 | RS-710 |  |  | 30d |
| RS-712 |  | Enabling works inspection |  | 10d | 2026-07-06 | 2026-07-17 | RS-711 |  |  | 29d |

| ID | WBS | Activity | Duration | Start | Finish | Predecessors | Total float |
| --- | --- | --- | --- | --- | --- | --- | --- |
|  | PROC | **Long Lead Procurement** |  | 2026-06-23 | 2027-01-04 |  |  |
| RS-210 |  | Switchgear manufacture and FAT | 140d | 2026-06-23 | 2027-01-04 | RS-120 | 11d |
